# GFURR.BBS.Master.Plan

Schedule from MS Project, 2018-02-02 to 2018-04-20.

## Calendars

- Standard: Mon-Fri 08:00-12:00, 13:00-17:00; Sat-Sun off.

## Resources

| Resource |
| --- |
| Christine |
| FRC Team |
| David |
| Dan |
| Simone |
| Dan and Simone |
| Ben |
| Yao |

## Schedule

| ID | WBS | Task | Type | Duration | Start | Finish | Predecessors | Total slack | Resources | Work |
| --- | --- | --- | --- | --- | --- | --- | --- | --- | --- | --- |
| 2 | 1 | **Location Logistics** |  | 8d | 2018-02-05 | 2018-02-14 |  | 0d |  | 80h |
| 3 | 1.1 | Reserve on Lyric | manual | 3d | 2018-02-05 | 2018-02-07 |  |  | Christine | 24h |
| 4 | 1.2 | Site Visit | manual | 1d | 2018-02-14 | 2018-02-14 | 5 |  | FRC Team | 8h |
| 5 | 1.3 | Sign Contract | manual | 3d | 2018-02-08 | 2018-02-12 | 3 |  | David; Christine | 48h |
| 6 | 2 | **Summit Speakers** |  | 41d | 2018-02-05 | 2018-04-02 |  | 0d |  | 1160h |
| 7 | 2.1 | Round 1 Invitations | manual | 1d | 2018-02-05 | 2018-02-05 |  |  | Dan; Simone | 16h |
| 8 | 2.2 | Invitation Follow-up | manual | 9d | 2018-02-05 | 2018-02-15 | 7 |  | Dan; Simone | 144h |
| 9 | 2.3 | Round 2 Invitations | manual | 1d | 2018-02-19 | 2018-02-19 |  |  | Dan; Simone | 16h |
| 10 | 2.4 | Invitation Follow-up | manual | 10d | 2018-02-19 | 2018-03-02 | 9 |  | Dan; Simone | 160h |
| 11 | 2.5 | Round 3 Invitations | manual | 1d | 2018-03-05 | 2018-03-05 |  |  | Dan; Simone | 16h |
| 12 | 2.6 | Invitation Follow-up | manual | 10d | 2018-03-05 | 2018-03-16 | 11 |  | Dan; Simone | 160h |
| 13 | 2.7 | Speaker Travel Logisitics | manual | 41d | 2018-02-05 | 2018-04-02 |  |  | Christine | 328h |
| 14 | 2.8 | Speaker Bios and Photos | manual | 40d | 2018-02-05 | 2018-03-30 |  |  | Dan and Simone | 320h |
| 15 | 3 | **Media Design** |  | 19d | 2018-02-02 | 2018-02-28 |  | 0d |  | 384h |
| 16 | 3.1 | **Contract Position Logistics** |  | 8d | 2018-02-02 | 2018-02-13 |  | 0d |  | 64h |
| 17 | 3.1.1 | Web, Video and Grphx Job Descriptions | manual | 2d | 2018-02-02 | 2018-02-05 |  |  | Ben | 16h |
| 18 | 3.1.2 | Designer Submission | manual | 1d | 2018-02-05 | 2018-02-05 |  |  | Ben; Yao | 16h |
| 19 | 3.1.3 | Designer Review and Selection | manual | 2d | 2018-02-12 | 2018-02-13 |  |  | Ben; Yao | 32h |
| 20 | 3.2 | **Graphic Design** |  | 11d | 2018-02-13 | 2018-02-27 | 19 | 0d | Ben | 176h |
| 21 | 3.2.1 | Meet with Designer | manual | 3d | 2018-02-14 | 2018-02-16 | 19, 22, 27 |  | Ben | 24h |
| 22 | 3.2.2 | Finalize List of Graphic Design Needs | manual | 1d | 2018-02-13 | 2018-02-13 |  |  | Ben | 8h |
| 23 | 3.2.3 | Logo Design Process | manual | 6d | 2018-02-19 | 2018-02-26 | 21 |  | Ben | 48h |
| 24 | 3.2.4 | Logo Final Approval | manual | 1d | 2018-02-27 | 2018-02-27 | 23 |  | Ben | 8h |
| 25 | 3.3 | **Website Design** |  | 18d | 2018-02-05 | 2018-02-28 |  | 0d |  | 144h |
| 26 | 3.3.1 | Domain Purchase | manual | 5d | 2018-02-05 | 2018-02-09 |  |  | David | 40h |
| 27 | 3.3.2 | Finalize List of Web Design Needs and Calendar | manual | 1d | 2018-02-13 | 2018-02-13 |  |  | Ben | 8h |
| 28 | 3.3.3 | <New Task> | manual | 1d? | 2018-02-05 | 2018-02-05 |  |  |  |  |
| 29 | 3.3.4 | Meet with Designer | manual | 3d | 2018-02-14 | 2018-02-16 |  |  | Yao | 24h |
| 30 | 3.3.5 | Website Design Process | manual | 7d | 2018-02-19 | 2018-02-27 | 29 |  | Yao | 56h |
| 31 | 3.3.6 | Website Final Approval | manual | 1d | 2018-02-27 | 2018-02-27 | 30 |  | Yao | 8h |
| 32 | 3.3.7 | Website Launch | manual | 1d | 2018-02-28 | 2018-02-28 | 31, 35 |  | Yao | 8h |

| ID | WBS | Task | Type | Duration | Start | Finish | Total slack | Constraint | Resources | Work |
| --- | --- | --- | --- | --- | --- | --- | --- | --- | --- | --- |
| 33 | 4 | **Marketing and Communications** |  | 46d | 2018-02-09 | 2018-04-13 | 0d |  |  | 480h |
| 34 | 4.1 | **Registration Process** |  | 46d | 2018-02-09 | 2018-04-13 | 0d |  |  | 480h |
| 35 | 4.1.1 | Registration Form Finalization | manual | 5d | 2018-02-21 | 2018-02-27 |  |  | Yao | 40h |
| 36 | 4.1.2 | **Registration Report** |  | 46d | 2018-02-09 | 2018-04-13 | 0d |  | Yao | 440h |
| 37 | 4.1.2.1 | Registration Report 1 | manual | 1d | 2018-02-09 | 2018-02-09 |  | start no earlier than 2018-02-09 | Yao | 8h |
| 38 | 4.1.2.2 | Registration Report 2 | manual | 1d | 2018-02-16 | 2018-02-16 |  | start no earlier than 2018-02-16 | Yao | 8h |
| 39 | 4.1.2.3 | Registration Report 3 | manual | 1d | 2018-02-23 | 2018-02-23 |  | start no earlier than 2018-02-23 | Yao | 8h |
| 40 | 4.1.2.4 | Registration Report 4 | manual | 1d | 2018-03-02 | 2018-03-02 |  | start no earlier than 2018-03-02 | Yao | 8h |
| 41 | 4.1.2.5 | Registration Report 6 | manual | 1d | 2018-03-16 | 2018-03-16 |  | start no earlier than 2018-03-16 | Yao | 8h |
| 42 | 4.1.2.6 | Registration Report 7 | manual | 1d | 2018-03-23 | 2018-03-23 |  | start no earlier than 2018-03-23 | Yao | 8h |
| 43 | 4.1.2.7 | Registration Report 8 | manual | 1d | 2018-03-30 | 2018-03-30 |  | start no earlier than 2018-03-30 | Yao | 8h |
| 44 | 4.1.2.8 | Registration Report 9 | manual | 1d | 2018-04-06 | 2018-04-06 |  | start no earlier than 2018-04-06 | Yao | 8h |
| 45 | 4.1.2.9 | Registration Report 10 | manual | 1d | 2018-04-13 | 2018-04-13 |  | start no earlier than 2018-04-13 | Yao | 8h |
| 46 | 4.2 | Public Relations | manual | 1d? | 2018-02-09 | 2018-02-09 |  |  |  |  |
| 47 | 4.3 | Communications/Outreach | manual | 1d? | 2018-02-09 | 2018-02-09 |  |  |  |  |
| 48 | 4.4 | University List | manual | 1d? | 2018-02-09 | 2018-02-09 |  |  |  |  |
| 49 | 4.5 | VT and NRV List | manual | 1d? | 2018-02-09 | 2018-02-09 |  |  |  |  |
| 50 | 4.6 | Business List | manual | 1d? | 2018-02-09 | 2018-02-09 |  |  |  |  |
| 51 | 4.7 | Advertising Placement | manual | 1d? | 2018-02-09 | 2018-02-09 |  |  |  |  |
| 52 | 5 | Food Services | manual | 1d? | 2018-02-05 | 2018-02-05 |  |  |  |  |
| 53 | 6 | <New Task> | manual | 1d? | 2018-02-05 | 2018-02-05 |  |  |  |  |
| 54 | 7 | Hotel Services | manual | 1d? | 2018-02-05 | 2018-02-05 |  |  |  |  |
| 55 | 8 | Reserve Hotel Room Block | manual | 1d? | 2018-02-05 | 2018-02-05 |  |  |  |  |
| 56 | 9 | Finalize Hotel Room Block | manual | 1d? | 2018-02-05 | 2018-02-05 |  |  |  |  |
| 57 | 10 | <New Task> | manual | 1d? | 2018-02-05 | 2018-02-05 |  |  |  |  |
| 58 | 11 | <New Task> | manual | 1d? | 2018-02-05 | 2018-02-05 |  |  |  |  |
| 59 | 12 | Day of Event (Thursday) | manual | 1d | 2018-04-19 | 2018-04-19 |  |  | FRC Team | 8h |
| 60 | 13 | Day of Event (Friday) | manual | 1d | 2018-04-20 | 2018-04-20 |  |  | FRC Team | 8h |
